# Centro comunitario

Schedule from MS Project XML, 2027-02-01 to 2027-07-16.

## Calendars

- Estándar: Mon-Sun off. Exceptions (off unless hours are given): 2027-03-25 (Jueves Santo), 2027-03-26 (Viernes Santo), 2027-05-01 (Día del Trabajo (cae en sábado)).

## Schedule

| ID | Task | Type | Duration | Start | Finish | Predecessors | Constraint | Categoría |
| --- | --- | --- | --- | --- | --- | --- | --- | --- |
| 1 | Inicio del proyecto | milestone | 0d | 2027-02-01 | 2027-02-01 |  |  | Hitos |
| 2 | Permisos y licencias |  | 15d | 2027-02-01 | 2027-02-19 | 1 |  | Trámites |
| 3 | Diseño detallado |  | 20d | 2027-02-01 | 2027-02-26 | 1 |  | Diseño |
| 4 | Movilización de obra |  | 5d | 2027-02-22 | 2027-02-26 | 2 |  | Obra gris |
| 5 | Excavación |  | 10d | 2027-03-01 | 2027-03-12 | 3, 4 |  | Obra gris |
| 6 | Cimentación |  | 15d | 2027-03-15 | 2027-04-06 | 5 |  | Obra gris |
| 7 | Estructura |  | 30d | 2027-04-07 | 2027-05-18 | 6 |  | Obra gris |
| 8 | Fabricación del ascensor |  | 45d | 2027-03-08 | 2027-05-11 | 3FS+5d |  | Suministros |
| 9 | Cubierta |  | 12d | 2027-05-19 | 2027-06-03 | 7 |  | Obra gris |
| 10 | Instalaciones eléctricas |  | 20d | 2027-04-21 | 2027-05-18 | 7SS+10d |  | Instalaciones |
| 11 | Instalaciones hidráulicas |  | 18d | 2027-04-21 | 2027-05-14 | 7SS+10d |  | Instalaciones |
| 12 | Mampostería |  | 20d | 2027-05-12 | 2027-06-08 | 7FS-5d |  | Obra gris |
| 13 | Montaje del ascensor |  | 8d | 2027-06-04 | 2027-06-15 | 8, 9 |  | Suministros |
| 14 | Acabados interiores |  | 25d | 2027-06-09 | 2027-07-13 | 10, 11, 12 |  | Acabados |
| 15 | Fachada |  | 15d | 2027-06-04 | 2027-06-24 | 9 |  | Acabados |
| 16 | Pruebas de instalaciones |  | 6d | 2027-05-14 | 2027-05-21 | 10FF+3d, 11FF+3d |  | Instalaciones |
| 17 | Paisajismo |  | 10d | 2027-06-28 | 2027-07-09 | 15 | start no earlier than 2027-06-28 | Exteriores |
| 18 | Limpieza final |  | 3d | 2027-07-14 | 2027-07-16 | 13, 14, 16, 17 |  | Acabados |
| 19 | Entrega al cliente | milestone | 0d | 2027-07-16 | 2027-07-16 | 18 |  | Hitos |
| 20 | Vigilancia hasta la entrega |  | 10d | 2027-07-05 | 2027-07-16 | 19SF |  | Obra gris |
